Schedule from MS Project XML, 2025-01-06 to 2026-01-12, status date 2025-06-30, A marks actual dates.

## Calendars

- Standard: Mon-Fri 08:00-12:00, 13:00-17:00; Sat-Sun off.

## Resources

| Resource |
| --- |
| Welding Crew A |
| Welding Crew B |
| NDT Technician Team |
| Coating Crew |
| Excavator Fleet |
| Sideboom Fleet |
| HDD Contractor |
| Civil Crew |
| E&I Contractor |
| Hydrotest Contractor |
| QA/QC Inspector |

## Schedule

| ID | WBS | Task | Duration | Start | Finish | Predecessors | Complete | Remaining | Baseline start | Baseline finish | Baseline duration | Total slack | Free slack | Resources |
| --- | --- | --- | --- | --- | --- | --- | --- | --- | --- | --- | --- | --- | --- | --- |
| 1 | 1 | **Project Management & Permits** | 0d | 2025-01-06 | 2025-04-11 |  |  |  | 2025-01-07 | 2025-04-14 |  |  |  |  |
| 2 | 1.1 | Mobilisation & Site Establishment | 10d | 2025-01-06 A | 2025-01-17 A | 51 | 100% |  | 2025-01-07 | 2025-01-20 | 10d |  |  |  |
| 3 | 1.2 | Environmental Clearance | 25d | 2025-01-13 A | 2025-02-14 A | 2SS+5d | 100% |  | 2025-01-14 | 2025-02-17 | 25d |  |  |  |
| 4 | 1.3 | Right of Way Acquisition | 40d | 2025-02-17 A | 2025-04-11 A | 3 | 100% |  | 2025-02-18 | 2025-04-14 | 40d |  |  |  |
| 5 | 2 | **Engineering & Procurement** | 0d | 2025-01-06 | 2025-06-27 |  |  |  | 2025-01-07 | 2025-08-11 |  |  |  |  |
| 6 | 2.1 | Detailed Design & IFC Drawings | 45d | 2025-01-06 A | 2025-03-07 A | 51 | 100% |  | 2025-01-07 | 2025-03-10 | 45d |  |  |  |
| 7 | 2.2 | Line Pipe Procurement | 90d | 2025-03-10 A | 2025-06-06 A | 6 | 100% |  | 2025-03-11 | 2025-07-14 | 90d |  |  |  |
| 8 | 2.3 | Valves & Fittings Procurement | 75d | 2025-03-17 A | 2025-06-13 A | 6FS+5d | 100% |  | 2025-03-18 | 2025-06-30 | 75d |  |  |  |
| 9 | 2.4 | Pipe Delivery to Stockyard | 20d | 2025-06-09 A | 2025-06-27 A | 7 | 100% |  | 2025-07-15 | 2025-08-11 | 20d |  |  |  |
| 10 | 3 | **ROW & Civil Works** | 0d | 2025-04-14 | 2025-05-30 |  |  |  | 2025-04-15 | 2025-06-02 |  |  |  |  |
| 11 | 3.1 | ROW Clearing & Grading - Spread A | 30d | 2025-04-14 A | 2025-05-23 A | 52 | 100% |  | 2025-04-15 | 2025-05-26 | 30d |  |  | Excavator Fleet |
| 12 | 3.2 | ROW Clearing & Grading - Spread B | 30d | 2025-04-14 A | 2025-05-23 | 52 | 85% | 4.5d | 2025-04-15 | 2025-05-26 | 30d | 24d |  | Excavator Fleet |
| 13 | 3.3 | Access Road Construction | 25d | 2025-04-28 A | 2025-05-30 A | 11SS+10d | 100% |  | 2025-04-29 | 2025-06-02 | 25d |  |  | Civil Crew |
| 14 | 4 | **Pipeline Construction - Spread A (CH 0+000 to 12+000)** | 0d | 2025-05-26 | 2025-10-01 |  |  |  | 2025-06-03 | 2025-11-13 |  |  |  |  |
| 15 | 4.1 | Stringing - Spread A | 15d | 2025-06-02 A | 2025-06-20 A | 11, 9 | 100% |  | 2025-08-12 | 2025-09-01 | 15d |  |  | Welding Crew A |
| 16 | 4.2 | Bending - Spread A | 12d | 2025-06-09 A | 2025-07-22 | 15SS+5d | 70% | 3.6d | 2025-08-19 | 2025-09-03 | 12d | -1d |  | Welding Crew A |
| 17 | 4.3 | Welding - Spread A | 42d | 2025-06-12 A | 2025-09-05 | 16SS+3d | 35% | 27.3d | 2025-08-22 | 2025-10-02 | 30d | -1d |  | Welding Crew A |
| 18 | 4.4 | NDT / Radiography - Spread A | 38d | 2025-06-19 A | 2025-09-08 | 17SS+5d | 18% | 31.16d | 2025-08-29 | 2025-10-09 | 30d | -1d |  | NDT Technician Team; QA/QC Inspector |
| 19 | 4.5 | Field Joint Coating - Spread A | 25d | 2025-07-24 | 2025-08-27 | 18SS+5d |  |  | 2025-09-05 | 2025-10-09 | 25d | -1d |  | Coating Crew |
| 20 | 4.6 | Trenching - Spread A | 25d | 2025-05-26 A | 2025-07-04 | 11FS+5d | 55% | 11.25d | 2025-06-03 | 2025-07-07 | 25d | 37d | 38d | Excavator Fleet |
| 21 | 4.7 | Lowering-in - Spread A | 20d | 2025-08-28 | 2025-09-24 | 19, 20 |  |  | 2025-10-10 | 2025-11-06 | 20d | -1d |  | Sideboom Fleet |
| 22 | 4.8 | Backfilling & Reinstatement - Spread A | 20d | 2025-09-04 | 2025-10-01 | 21SS+5d |  |  | 2025-10-17 | 2025-11-13 | 20d | -1d |  | Sideboom Fleet |
| 23 | 5 | **Pipeline Construction - Spread B (CH 12+000 to 24+000)** | 0d | 2025-06-02 | 2025-10-01 |  |  |  | 2025-06-03 | 2025-11-13 |  |  |  |  |
| 24 | 5.1 | Stringing - Spread B | 15d | 2025-06-16 A | 2025-07-18 | 12, 9 | 40% | 9d | 2025-08-12 | 2025-09-01 | 15d | -1d |  | Welding Crew B |
| 25 | 5.2 | Bending - Spread B | 12d | 2025-06-23 A | 2025-07-22 | 24SS+5d | 10% | 10.8d | 2025-08-19 | 2025-09-03 | 12d | -1d |  | Welding Crew B |
| 26 | 5.3 | Welding - Spread B | 36d | 2025-07-10 | 2025-08-28 | 25SS+3d |  |  | 2025-08-22 | 2025-10-02 | 30d | -1d |  | Welding Crew B |
| 27 | 5.4 | NDT / Radiography - Spread B | 30d | 2025-07-17 | 2025-08-27 | 26SS+5d |  |  | 2025-08-29 | 2025-10-09 | 30d | -1d |  | NDT Technician Team; QA/QC Inspector |
| 28 | 5.5 | Field Joint Coating - Spread B | 25d | 2025-07-24 | 2025-08-27 | 27SS+5d |  |  | 2025-09-05 | 2025-10-09 | 25d | -1d |  | Coating Crew |
| 29 | 5.6 | Trenching - Spread B | 25d | 2025-06-02 | 2025-07-04 | 12FS+5d |  |  | 2025-06-03 | 2025-07-07 | 25d | 37d | 38d | Excavator Fleet |
| 30 | 5.7 | Lowering-in - Spread B | 20d | 2025-08-28 | 2025-09-24 | 28, 29 |  |  | 2025-10-10 | 2025-11-06 | 20d | -1d |  | Sideboom Fleet |
| 31 | 5.8 | Backfilling & Reinstatement - Spread B | 20d | 2025-09-04 | 2025-10-01 | 30SS+5d |  |  | 2025-10-17 | 2025-11-13 | 20d | -1d |  | Sideboom Fleet |

| ID | WBS | Task | Type | Duration | Start | Finish | Predecessors | Complete | Remaining | Baseline start | Baseline finish | Baseline duration | Total slack | Free slack | Constraint | Resources |
| --- | --- | --- | --- | --- | --- | --- | --- | --- | --- | --- | --- | --- | --- | --- | --- | --- |
| 32 | 6 | **Special Crossings** |  | 0d | 2025-05-05 | 2025-08-06 |  |  |  | 2025-05-27 | 2025-07-21 |  |  |  |  |  |
| 33 | 6.1 | HDD River Crossing CH 8+400 |  | 48d | 2025-05-19 A | 2025-08-06 | 13 | 45% | 26.4d | 2025-06-03 | 2025-07-21 | 35d | 39d | 40d |  | HDD Contractor |
| 34 | 6.2 | Road Crossing CH 5+200 |  | 10d | 2025-05-05 A | 2025-05-16 A | 11 | 100% |  | 2025-05-27 | 2025-06-09 | 10d |  |  |  |  |
| 35 | 6.3 | Rail Crossing CH 17+600 |  | 18d | 2025-05-26 | 2025-06-18 | 12 |  |  | 2025-05-27 | 2025-06-19 | 18d | 148d |  |  |  |
| 36 | 7 | **Station Works** |  | 0d | 2025-05-12 | 2025-08-22 |  |  |  | 2025-04-15 | 2025-07-28 |  |  |  |  |  |
| 37 | 7.1 | PS-1 Civil Foundations |  | 30d | 2025-05-12 A | 2025-06-20 | 52 | 60% | 12d | 2025-04-15 | 2025-05-26 | 30d | 73d |  |  | Civil Crew |
| 38 | 7.2 | PS-1 Mechanical Erection |  | 40d | 2025-06-23 | 2025-08-15 | 37 |  |  | 2025-05-27 | 2025-07-21 | 40d | 73d |  |  |  |
| 39 | 7.3 | PS-1 Electrical & Instrumentation |  | 35d | 2025-07-07 | 2025-08-22 | 38SS+10d |  |  | 2025-06-10 | 2025-07-28 | 35d | 73d | 74d |  | E&I Contractor |
| 40 | 7.4 | Valve Station SV-01 |  | 15d | 2025-06-09 | 2025-06-27 | 11FS+10d |  |  | 2025-06-10 | 2025-06-30 | 15d | 141d |  |  | Civil Crew |
| 41 | 7.5 | Valve Station SV-02 |  | 15d | 2025-06-09 | 2025-06-27 | 12FS+10d |  |  | 2025-06-10 | 2025-06-30 | 15d | 141d |  |  | Civil Crew |
| 42 | 8 | **Testing & Commissioning** |  | 0d | 2025-10-02 | 2026-01-12 |  |  |  | 2025-11-14 | 2026-02-24 |  |  |  |  |  |
| 43 | 8.1 | Golden Tie-in Welds |  | 12d | 2025-10-02 | 2025-10-17 | 33, 53, 54 |  |  | 2025-11-14 | 2025-12-01 | 12d | -1d |  |  | Welding Crew A; QA/QC Inspector |
| 44 | 8.2 | Pre-Hydrotest Cleaning & Gauging |  | 10d | 2025-10-20 | 2025-10-31 | 43 |  |  | 2025-12-02 | 2025-12-15 | 10d | -1d |  |  | Hydrotest Contractor |
| 45 | 8.3 | Hydrotest Section 4A |  | 12d | 2025-11-03 | 2025-11-18 | 44 |  |  | 2025-12-16 | 2025-12-31 | 12d | 1d |  | finish no later than 2025-11-28 | Hydrotest Contractor |
| 46 | 8.4 | Hydrotest Section 4B |  | 12d | 2025-11-05 | 2025-11-20 | 44FS+2d |  |  | 2025-12-18 | 2026-01-02 | 12d | -1d |  |  | Hydrotest Contractor |
| 47 | 8.5 | Dewatering & Drying |  | 10d | 2025-11-21 | 2025-12-04 | 45, 46 |  |  | 2026-01-05 | 2026-01-16 | 10d | -1d |  |  | Hydrotest Contractor |
| 48 | 8.6 | Pre-commissioning |  | 15d | 2025-12-05 | 2025-12-25 | 47, 39 |  |  | 2026-01-19 | 2026-02-06 | 15d | -1d |  |  | E&I Contractor |
| 49 | 8.7 | Commissioning & Handover |  | 12d | 2025-12-26 | 2026-01-12 | 48 |  |  | 2026-02-09 | 2026-02-24 | 12d | -1d |  |  | QA/QC Inspector |
| 50 | 9 | **Project Milestones** |  | 0d | 2025-01-06 | 2026-01-12 |  |  |  | 2025-01-06 | 2026-02-24 |  |  |  |  |  |
| 51 | 9.1 | MS: Notice to Proceed | milestone | 0d | 2025-01-06 A | 2025-01-06 A |  | 100% |  | 2025-01-06 | 2025-01-06 |  |  |  |  |  |
| 52 | 9.2 | MS: ROW Available | milestone | 0d | 2025-04-11 A | 2025-04-11 A | 4 | 100% |  | 2025-04-14 | 2025-04-14 |  |  |  |  |  |
| 53 | 9.3 | MS: Mechanical Completion Spread A | milestone | 0d | 2025-10-01 | 2025-10-01 | 22 |  |  | 2025-11-13 | 2025-11-13 |  |  |  |  |  |
| 54 | 9.4 | MS: Mechanical Completion Spread B | milestone | 0d | 2025-10-01 | 2025-10-01 | 31 |  |  | 2025-11-13 | 2025-11-13 |  |  |  |  |  |
| 55 | 9.5 | MS: Hydrotest Complete | milestone | 0d | 2025-11-20 | 2025-11-20 | 45, 46 |  |  | 2026-01-02 | 2026-01-02 |  | 37d |  |  |  |
| 56 | 9.6 | MS: Ready for Start-Up | milestone | 0d | 2026-01-12 | 2026-01-12 | 49 |  |  | 2026-02-24 | 2026-02-24 |  |  |  | finish no later than 2025-12-19 |  |
